# Lab5_PlantillaGantt

How a schedule from MS Project changed from version to version. A marks actual dates.

## Version 1 (saved 2013-06-14, file TESIS_GANTT_V1_2007.mpp)

| ID | WBS | Task | Duration | Start | Finish | Predecessors | Complete | Total float | Constraint |
| --- | --- | --- | --- | --- | --- | --- | --- | --- | --- |
| 1 | 1 | **PROYECTO DE FIN DE CARRERA** | 245d? | 2013-03-18 A | 2014-02-19 |  | 17% | 0d |  |
| 2 | 1.1 | **1. Inicio** | 73d | 2013-03-18 A | 2013-06-24 |  | 99% | 172d |  |
| 3 |  | Elección y justificación del tema y área del proyecto | 6d | 2013-03-18 A | 2013-03-25 A |  | 100% |  | finish no earlier than 2013-03-25 |
| 4 |  | Entregable 1 | 0d | 2013-03-25 A | 2013-03-25 A | 3 | 100% |  |  |
| 5 |  | Revisión de la literatura para elaborar el marco conceptual y el estado del arte | 17d | 2013-03-30 A | 2013-04-22 A |  | 100% |  | start no earlier than 2013-03-30 |
| 6 |  | Elaboración de la problemática, marco teórico y estado del arte | 17d | 2013-03-30 A | 2013-04-22 A |  | 100% |  | start no earlier than 2013-03-30 |
| 7 |  | Entregable 2 | 0d | 2013-04-22 A | 2013-04-22 A | 6 | 100% |  | start no earlier than 2013-04-22 |
| 8 |  | Definición del objetivo general, objetivos específicos y resultados esperados | 17d | 2013-04-27 A | 2013-05-20 A |  | 100% |  | must finish on 2013-05-20 |
| 9 |  | Entregable 3 | 0d | 2013-05-20 A | 2013-05-20 A | 8 | 100% |  | start no earlier than 2013-05-20 |
| 10 |  | Definición del alcance y limitaciones del proyecto, y los métodos y procedimientos a usar | 11d | 2013-05-25 A | 2013-06-10 A |  | 100% |  | start no earlier than 2013-05-25 |
| 11 |  | Entregable 4 | 0d | 2013-06-10 A | 2013-06-10 A | 10 | 100% |  | start no earlier than 2013-06-10 |
| 12 |  | Definición de la justificación y viabilidad del proyecto, y correcciones de entregables anteriores | 4d | 2013-06-12 A | 2013-06-17 A |  | 100% |  | finish no earlier than 2013-06-17 |
| 13 |  | Entregable 5 | 0d | 2013-06-17 A | 2013-06-17 A | 12 | 100% |  | start no earlier than 2013-06-17 |
| 14 |  | Primera sustentación del proyecto ante jurado | 1d | 2013-06-24 | 2013-06-24 |  |  | 172d | start no earlier than 2013-06-24 |
| 15 | 1.2 | **2. Planificacion** | 38d | 2013-05-25 A | 2013-07-17 |  | 43% | 155d |  |
| 16 |  | Elección de metodología que servirá para la gestión del proyecto | 3d | 2013-05-25 A | 2013-05-29 A |  | 100% |  | start no earlier than 2013-05-25 |
| 17 |  | Metodología PMBOK escogida | 0d | 2013-06-10 A | 2013-06-10 A | 16 | 100% |  |  |
| 18 |  | Elección de metodología que servirá para la gestión del producto | 3d | 2013-05-25 A | 2013-05-29 A |  | 100% |  | start no earlier than 2013-05-25 |
| 19 |  | Metodología XP escogida | 0d | 2013-06-10 A | 2013-06-10 A | 18 | 100% |  |  |
| 20 |  | Elaboración de cronograma del proyecto | 3d | 2013-06-13 | 2013-06-17 |  |  | 177d | finish no earlier than 2013-06-17 |
| 21 |  | Diagrama de Gantt | 0d | 2013-06-17 | 2013-06-17 | 20 |  | 177d | start no earlier than 2013-06-17 |
| 22 |  | Elaboración de la estructura de desglose de trabajo (EDT) | 2d | 2013-07-11 | 2013-07-13 |  |  | 158d | finish no earlier than 2013-07-13 |
| 23 |  | Estructura de desglose de trabajo elaborada | 0d | 2013-07-13 | 2013-07-13 | 22 |  | 158d | start no earlier than 2013-07-13 |
| 24 |  | Desarrollo del Plan de Gestión del Proyecto | 3d | 2013-07-15 | 2013-07-17 |  |  | 58d | start no earlier than 2013-07-14 |
| 25 |  | Plan de Gestión del Proyecto | 0d | 2013-07-17 | 2013-07-17 | 24 |  | 58d | start no earlier than 2013-07-16 |
| 26 | 1.3 | **3. Ejecucion** | 155d? | 2013-07-18 | 2014-02-19 |  |  | 0d |  |
| 27 |  | Desarrollar el Acta de constitución del proyecto | 1d | 2013-08-26 | 2013-08-26 |  |  | 127d | finish no earlier than 2013-08-26 |
| 28 |  | Acta de constitución del proyecto | 0d | 2013-08-26 | 2013-08-26 | 27 |  | 127d | start no earlier than 2013-08-26 |
| 29 | 1.3.3 | **Fase de Análisis** | 37d | 2013-07-18 | 2013-09-06 |  |  | 58d |  |
| 30 |  | Elaboración del caso de negocio | 5d | 2013-07-18 | 2013-07-24 | 25 |  | 58d | start no earlier than 2013-07-17 |
| 31 |  | Documento con el caso de negocio | 0d | 2013-07-24 | 2013-07-24 | 30 |  | 58d |  |
| 32 |  | Elaboración de plan de gestión de riesgos | 2d | 2013-09-02 | 2013-09-03 |  |  | 118d | start no earlier than 2013-09-02 |
| 33 |  | Plan de Gestión de Riesgos | 0d | 2013-09-03 | 2013-09-03 | 32 |  | 118d | start no earlier than 2013-07-26 |
| 34 |  | Elaboración de la matriz de riesgos | 3d | 2013-09-04 | 2013-09-06 | 33 |  | 118d |  |
| 35 |  | Matriz de riesgos | 0d | 2013-09-06 | 2013-09-06 | 34 |  | 118d | start no earlier than 2013-07-31 |
| 36 |  | Modelamiento de los procesos de negocio | 9d | 2013-07-25 | 2013-08-06 | 31 |  | 58d |  |
| 37 |  | Diagramas de procesos de negocio | 0d | 2013-08-06 | 2013-08-06 | 36 |  | 58d |  |
| 38 |  | Definición de las reglas y políticas de negocio | 5d | 2013-08-07 | 2013-08-13 | 37 |  | 58d |  |
| 39 |  | Documento con las reglas y políticas del negocio | 0d | 2013-08-13 | 2013-08-13 | 38 |  | 58d |  |
| 40 |  | Elaboración de requerimientos del sistema | 4d | 2013-08-14 | 2013-08-19 | 39 |  | 58d |  |
| 41 |  | Catálogo de requisitos | 0d | 2013-08-19 | 2013-08-19 | 40 |  | 58d |  |
| 42 |  | Elaboración de historias de usuarios | 5d | 2013-08-20 | 2013-08-26 | 41 |  | 58d |  |
| 43 |  | Historias de usuarios documentadas | 0d | 2013-08-26 | 2013-08-26 | 42 |  | 58d |  |
| 44 |  | Análisis comparativo de posibles herramientas tecnológicas a adoptar para el proyecto | 2d | 2013-08-27 | 2013-08-28 | 43 |  | 58d |  |
| 45 |  | Cuadro comparativo con las herramientas tecnológicas disponibles | 0d | 2013-08-28 | 2013-08-28 | 44 |  | 58d |  |
| 46 |  | Elaboración de diagrama de clases | 5d | 2013-08-29 | 2013-09-04 | 45 |  | 58d | start no earlier than 2013-08-28 |
| 47 |  | Diagrama de clases elaborado | 1d | 2013-09-05 | 2013-09-05 | 46 |  | 58d |  |
| 48 | 1.3.4 | **Fase de Diseño** | 19d | 2013-09-06 | 2013-10-02 |  |  | 58d |  |
| 49 |  | Elaboración de modelo de base de datos | 5d | 2013-09-06 | 2013-09-12 | 47 |  | 58d | start no earlier than 2013-09-05 |
| 50 |  | Modelo de base de datos elaborado | 1d | 2013-09-13 | 2013-09-13 | 49 |  | 58d | start no earlier than 2013-09-12 |
| 51 |  | Elaboración de pseudocódigo en lenguaje natural y español del algoritmo Tabú para la asignación del mejor proveedor al cliente | 4d | 2013-09-16 | 2013-09-19 | 50 |  | 58d |  |
| 52 |  | Documento con el pseudocódigo del algoritmo tabú | 0d | 2013-09-19 | 2013-09-19 | 51 |  | 58d |  |
| 53 |  | Elaboración de principales prototipos de interfaz gráfica del sistema | 5d | 2013-09-20 | 2013-09-26 | 52 |  | 58d |  |
| 54 |  | Prototipos de interfaz gráfica elaborados | 1d | 2013-09-27 | 2013-09-27 | 53 |  | 58d |  |
| 55 |  | Definición de la arquitectura del sistema | 3d | 2013-09-30 | 2013-10-02 | 54 |  | 58d |  |
| 56 |  | Arquitectura del sistema definido | 0d | 2013-10-02 | 2013-10-02 | 55 |  | 58d |  |
| 57 | 1.3.5 | **Fase de Implementación** | 42d? | 2013-12-23 | 2014-02-19 |  |  | 0d |  |
| 58 |  | Fase de Implementación | 0d? | 2013-12-23 | 2013-12-23 | 56 |  | 0d | must finish on 2013-12-23 |
| 59 |  | Iteración 1 - Implementación y Pruebas | 7d | 2013-12-24 | 2014-01-01 | 58 |  | 0d | start no earlier than 2013-10-02 |
| 60 |  | Iteración 2 - Implementación y Pruebas | 7d | 2014-01-02 | 2014-01-10 | 59 |  | 0d |  |
| 61 |  | Iteración 3 - Implementación y Pruebas | 7d | 2014-01-13 | 2014-01-21 | 60 |  | 0d |  |
| 62 |  | Iteración 4 - Implementación y Pruebas | 7d | 2014-01-22 | 2014-01-30 | 61 |  | 0d |  |
| 63 |  | Iteración 5 - Implementación y Pruebas | 7d | 2014-01-31 | 2014-02-10 | 62 |  | 0d |  |
| 64 |  | Iteración 6 - Implementación y Pruebas | 7d | 2014-02-11 | 2014-02-19 | 63 |  | 0d |  |
| 65 | 1.4 | **4. Control** | 197d | 2013-03-18 | 2013-12-14 |  |  | 48d |  |
| 66 |  | Reuniones semanales con el asesor para la primera parte del proyecto de fin de carrera (tesis 1) | 68d | 2013-03-18 | 2013-06-17 |  |  | 177d | finish no earlier than 2013-06-17 |
| 67 |  | Reuniones semanales con el asesor para la segunda parte del proyecto de fin de carrera (tesis 2) | 85d | 2013-08-19 | 2013-12-14 |  |  | 48d | finish no earlier than 2013-12-14 |
| 68 |  | Reuniones quincenales con los usuarios lideres del sistema | 110d | 2013-07-15 | 2013-12-14 |  |  | 48d | finish no earlier than 2013-12-14 |
| 69 | 1.5 | **5. Cierre** | 21d? | 2013-12-09 | 2014-01-06 |  |  | 0d |  |
| 70 |  | 5. Cierre | 0d? | 2013-12-09 | 2013-12-09 |  |  | 0d | must start on 2013-12-09 |

| ID | Task | Duration | Start | Finish | Total float | Constraint |
| --- | --- | --- | --- | --- | --- | --- |
| 71 | 5. Cierre | 0d? | 2014-01-06 | 2014-01-06 | 0d | must finish on 2014-01-06 |
| 72 | Elaboración del informe final del proyecto | 6d | 2013-12-09 | 2013-12-16 | 47d | start no earlier than 2013-12-09 |
| 73 | Informe final del proyecto de fin de carrera | 0d | 2013-12-16 | 2013-12-16 | 48d | start no earlier than 2013-12-16 |
| 74 | Sustentación final del proyecto ante jurado | 1d? | 2014-01-06 | 2014-01-06 | 32d | start no earlier than 2014-01-06 |

## Version 2 (saved 2013-06-17, file TESIS_GANTT_V2_2003.mpp)

Last finish 2014-02-19 → 2014-01-06 (-44d).

Added:

| ID | Task | Duration | Start | Finish | Predecessors | Constraint |
| --- | --- | --- | --- | --- | --- | --- |
| 59 | Iteración 1 completada | 0d | 2013-10-10 | 2013-10-10 | 58 |  |
| 61 | Iteración 2 completada | 0d | 2013-10-21 | 2013-10-21 | 60 |  |
| 63 | Iteración 3 completada | 0d | 2013-10-30 | 2013-10-30 | 62 |  |
| 65 | Iteración 4 completada | 0d | 2013-11-08 | 2013-11-08 | 64 |  |
| 67 | Iteración 5 completada | 0d | 2013-11-19 | 2013-11-19 | 66 |  |
| 69 | Iteración 6 completada | 0d | 2013-11-28 | 2013-11-28 | 68 |  |
| 72 | **Reunión con el asesor** | 52d | 2013-04-08 | 2013-06-17 |  |  |
| 73 | Reunión con el asesor 1 | 1d | 2013-04-08 | 2013-04-08 |  | start no earlier than 2013-04-08 |
| 74 | Control del proyecto realizado | 0d | 2013-04-08 | 2013-04-08 | 73 |  |
| 75 | Reunión con el asesor 2 | 1d | 2013-04-15 | 2013-04-15 |  | start no earlier than 2013-04-15 |
| 76 | Control del proyecto realizado | 0d | 2013-04-15 | 2013-04-15 | 75 |  |
| 77 | Reunión con el asesor 3 | 1d | 2013-04-22 | 2013-04-22 |  | start no earlier than 2013-04-22 |
| 78 | Control del proyecto realizado | 0d | 2013-04-22 | 2013-04-22 | 77 |  |
| 79 | Reunión con el asesor 4 | 1d | 2013-04-29 | 2013-04-29 |  | start no earlier than 2013-04-29 |
| 80 | Control del proyecto realizado | 0d | 2013-04-29 | 2013-04-29 | 79 |  |
| 81 | Reunión con el asesor 5 | 1d | 2013-05-06 | 2013-05-06 |  | start no earlier than 2013-05-06 |
| 82 | Control del proyecto realizado | 0d | 2013-05-06 | 2013-05-06 | 81 |  |
| 83 | Reunión con el asesor 6 | 1d | 2013-05-13 | 2013-05-13 |  | start no earlier than 2013-05-13 |
| 84 | Control del proyecto realizado | 0d | 2013-05-13 | 2013-05-13 | 83 |  |
| 85 | Reunión con el asesor 7 | 1d | 2013-05-20 | 2013-05-20 |  | start no earlier than 2013-05-20 |
| 86 | Control del proyecto realizado | 0d | 2013-05-20 | 2013-05-20 | 85 |  |
| 87 | Reunión con el asesor 8 | 1d | 2013-05-27 | 2013-05-27 |  | start no earlier than 2013-05-27 |
| 88 | Control del proyecto realizado | 0d | 2013-05-27 | 2013-05-27 | 87 |  |
| 89 | Reunión con el asesor 9 | 1d | 2013-06-03 | 2013-06-03 |  | start no earlier than 2013-06-03 |
| 90 | Control del proyecto realizado | 0d | 2013-06-03 | 2013-06-03 | 89 |  |
| 91 | Reunión con el asesor 10 | 1d | 2013-06-10 | 2013-06-10 |  | start no earlier than 2013-06-10 |
| 92 | Control del proyecto realizado | 0d | 2013-06-10 | 2013-06-10 | 91 |  |
| 93 | Reunión con el asesor 11 | 1d | 2013-06-17 | 2013-06-17 |  | start no earlier than 2013-06-17 |
| 94 | Control del proyecto realizado | 0d | 2013-06-17 | 2013-06-17 | 93 |  |
| 96 | **Reunión con el asesor** | 76d | 2013-08-26 | 2013-12-09 |  |  |
| 97 | Reunión con el asesor 1 | 1d | 2013-08-26 | 2013-08-26 |  | start no earlier than 2013-08-26 |
| 98 | Control del proyecto realizado | 0d | 2013-08-26 | 2013-08-26 | 97 |  |
| 99 | Reunión con el asesor 2 | 1d | 2013-09-02 | 2013-09-02 |  | start no earlier than 2013-09-02 |
| 100 | Control del proyecto realizado | 0d | 2013-09-02 | 2013-09-02 | 99 |  |
| 101 | Reunión con el asesor 3 | 1d | 2013-09-09 | 2013-09-09 |  | start no earlier than 2013-09-09 |
| 102 | Control del proyecto realizado | 0d | 2013-09-09 | 2013-09-09 | 101 |  |
| 103 | Reunión con el asesor 4 | 1d | 2013-09-16 | 2013-09-16 |  | start no earlier than 2013-09-16 |
| 104 | Control del proyecto realizado | 0d | 2013-09-16 | 2013-09-16 | 103 |  |
| 105 | Reunión con el asesor 5 | 1d | 2013-09-23 | 2013-09-23 |  | start no earlier than 2013-09-23 |
| 106 | Control del proyecto realizado | 0d | 2013-09-23 | 2013-09-23 | 105 |  |
| 107 | Reunión con el asesor 6 | 1d | 2013-09-30 | 2013-09-30 |  | start no earlier than 2013-09-30 |
| 108 | Control del proyecto realizado | 0d | 2013-09-30 | 2013-09-30 | 107 |  |
| 109 | Reunión con el asesor 7 | 1d | 2013-10-07 | 2013-10-07 |  | start no earlier than 2013-10-07 |
| 110 | Control del proyecto realizado | 0d | 2013-10-07 | 2013-10-07 | 109 |  |
| 111 | Reunión con el asesor 8 | 1d | 2013-10-14 | 2013-10-14 |  | start no earlier than 2013-10-14 |
| 112 | Control del proyecto realizado | 0d | 2013-10-14 | 2013-10-14 | 111 |  |
| 113 | Reunión con el asesor 9 | 1d | 2013-10-21 | 2013-10-21 |  | start no earlier than 2013-10-21 |
| 114 | Control del proyecto realizado | 0d | 2013-10-21 | 2013-10-21 | 113 |  |
| 115 | Reunión con el asesor 10 | 1d | 2013-10-28 | 2013-10-28 |  | start no earlier than 2013-10-28 |
| 116 | Control del proyecto realizado | 0d | 2013-10-28 | 2013-10-28 | 115 |  |
| 117 | Reunión con el asesor 11 | 1d | 2013-11-04 | 2013-11-04 |  | start no earlier than 2013-11-04 |
| 118 | Control del proyecto realizado | 0d | 2013-11-04 | 2013-11-04 | 117 |  |
| 119 | Reunión con el asesor 12 | 1d | 2013-11-11 | 2013-11-11 |  | start no earlier than 2013-11-11 |
| 120 | Control del proyecto realizado | 0d | 2013-11-11 | 2013-11-11 | 119 |  |
| 121 | Reunión con el asesor 13 | 1d | 2013-11-18 | 2013-11-18 |  | start no earlier than 2013-11-18 |
| 122 | Control del proyecto realizado | 0d | 2013-11-18 | 2013-11-18 | 121 |  |
| 123 | Reunión con el asesor 14 | 1d | 2013-11-25 | 2013-11-25 |  | start no earlier than 2013-11-25 |
| 124 | Control del proyecto realizado | 0d | 2013-11-25 | 2013-11-25 | 123 |  |
| 125 | Reunión con el asesor 15 | 1d | 2013-12-02 | 2013-12-02 |  | start no earlier than 2013-12-02 |
| 126 | Control del proyecto realizado | 0d | 2013-12-02 | 2013-12-02 | 125 |  |
| 127 | Reunión con el asesor 16 | 1d | 2013-12-09 | 2013-12-09 |  | start no earlier than 2013-12-09 |
| 128 | Control del proyecto realizado | 0d | 2013-12-09 | 2013-12-09 | 127 |  |
| 130 | **Reunión con usuarios del sistema** | 111d? | 2013-07-05 | 2013-12-06 |  |  |
| 131 | Reunión con usuarios del sistema | 0d? | 2013-07-05 | 2013-07-05 |  | must start on 2013-07-05 |
| 132 | Reunión con usuarios del sistema | 0d? | 2013-12-06 | 2013-12-06 |  | must finish on 2013-12-06 |
| 133 | Reunión con usuarios del sistema 1 | 1d | 2013-07-05 | 2013-07-05 |  | start no earlier than 2013-07-05 |
| 134 | Control del producto realizado | 0d | 2013-07-05 | 2013-07-05 | 133 |  |
| 135 | Reunión con usuarios del sistema 2 | 1d | 2013-07-19 | 2013-07-19 |  | start no earlier than 2013-07-19 |
| 136 | Control del producto realizado | 0d | 2013-07-19 | 2013-07-19 | 135 |  |
| 137 | Reunión con usuarios del sistema 3 | 1d | 2013-08-02 | 2013-08-02 |  | start no earlier than 2013-08-02 |
| 138 | Control del producto realizado | 0d | 2013-08-02 | 2013-08-02 | 137 |  |
| 139 | Reunión con usuarios del sistema 4 | 1d | 2013-08-16 | 2013-08-16 |  | start no earlier than 2013-08-16 |
| 140 | Control del producto realizado | 0d | 2013-08-16 | 2013-08-16 | 139 |  |
| 141 | Reunión con usuarios del sistema 5 | 1d | 2013-08-30 | 2013-08-30 |  | start no earlier than 2013-08-30 |
| 142 | Control del producto realizado | 0d | 2013-08-30 | 2013-08-30 | 141 |  |
| 143 | Reunión con usuarios del sistema 6 | 1d | 2013-09-13 | 2013-09-13 |  | start no earlier than 2013-09-13 |
| 144 | Control del producto realizado | 0d | 2013-09-13 | 2013-09-13 | 143 |  |
| 145 | Reunión con usuarios del sistema 7 | 1d | 2013-09-27 | 2013-09-27 |  | start no earlier than 2013-09-27 |
| 146 | Control del producto realizado | 0d | 2013-09-27 | 2013-09-27 | 145 |  |
| 147 | Reunión con usuarios del sistema 8 | 1d | 2013-10-11 | 2013-10-11 |  | start no earlier than 2013-10-11 |
| 148 | Control del producto realizado | 0d | 2013-10-11 | 2013-10-11 | 147 |  |
| 149 | Reunión con usuarios del sistema 9 | 1d | 2013-10-25 | 2013-10-25 |  | start no earlier than 2013-10-25 |
| 150 | Control del producto realizado | 0d | 2013-10-25 | 2013-10-25 | 149 |  |
| 151 | Reunión con usuarios del sistema 10 | 1d | 2013-11-08 | 2013-11-08 |  | start no earlier than 2013-11-08 |
| 152 | Control del producto realizado | 0d | 2013-11-08 | 2013-11-08 | 151 |  |
| 153 | Reunión con usuarios del sistema 11 | 1d | 2013-11-22 | 2013-11-22 |  | start no earlier than 2013-11-22 |
| 154 | Control del producto realizado | 0d | 2013-11-22 | 2013-11-22 | 153 |  |
| 155 | Reunión con usuarios del sistema 12 | 1d | 2013-12-06 | 2013-12-06 |  | start no earlier than 2013-12-06 |
| 156 | Control del producto realizado | 0d | 2013-12-06 | 2013-12-06 | 155 |  |

Removed: 58 Fase de Implementación; 70 5. Cierre; 71 5. Cierre

Changed:

| ID | Task | Start | Finish | Duration | Complete | Total float | Predecessors | Other |
| --- | --- | --- | --- | --- | --- | --- | --- | --- |
| 1 | **PROYECTO DE FIN DE CARRERA** |  | 2014-02-19 → 2014-01-06 (-44d) | 245d? → 213d? | 17% → 33% |  |  |  |
| 15 | **2. Planificacion** |  | 2013-07-17 → 2013-07-16 (-1d) | 38d → 37d | 43% → 46% | 155d → 124d |  |  |
| 24 | Desarrollo del Plan de Gestión del Proyecto |  | 2013-07-17 → 2013-07-16 (-1d) | 3d → 2d |  | 58d → 27d |  | constraint start no earlier than 2013-07-14 → finish no earlier than 2013-07-16 |
| 25 | Plan de Gestión del Proyecto | 2013-07-17 → 2013-07-16 (-1d) | 2013-07-17 → 2013-07-16 (-1d) |  |  | 58d → 27d |  |  |
| 26 | **3. Ejecucion** | 2013-07-18 → 2013-07-17 (-1d) | 2014-02-19 → 2013-11-28 (-83d) | 155d? → 97d |  | 0d → 27d |  |  |
| 29 | **Fase de Análisis** | 2013-07-18 → 2013-07-17 (-1d) |  | 37d → 38d |  | 58d → 27d |  |  |
| 30 | Elaboración del caso de negocio | 2013-07-18 → 2013-07-17 (-1d) | 2013-07-24 → 2013-07-23 (-1d) |  |  | 58d → 27d |  |  |
| 31 | Documento con el caso de negocio | 2013-07-24 → 2013-07-23 (-1d) | 2013-07-24 → 2013-07-23 (-1d) |  |  | 58d → 27d |  |  |
| 36 | Modelamiento de los procesos de negocio | 2013-07-25 → 2013-07-24 (-1d) | 2013-08-06 → 2013-08-05 (-1d) |  |  | 58d → 27d |  |  |
| 37 | Diagramas de procesos de negocio | 2013-08-06 → 2013-08-05 (-1d) | 2013-08-06 → 2013-08-05 (-1d) |  |  | 58d → 27d |  |  |
| 38 | Definición de las reglas y políticas de negocio | 2013-08-07 → 2013-08-06 (-1d) | 2013-08-13 → 2013-08-12 (-1d) |  |  | 58d → 27d |  |  |
| 39 | Documento con las reglas y políticas del negocio | 2013-08-13 → 2013-08-12 (-1d) | 2013-08-13 → 2013-08-12 (-1d) |  |  | 58d → 27d |  |  |
| 40 | Elaboración de requerimientos del sistema | 2013-08-14 → 2013-08-13 (-1d) | 2013-08-19 → 2013-08-16 (-3d) |  |  | 58d → 27d |  |  |
| 41 | Catálogo de requisitos | 2013-08-19 → 2013-08-16 (-3d) | 2013-08-19 → 2013-08-16 (-3d) |  |  | 58d → 27d |  |  |
| 42 | Elaboración de historias de usuarios | 2013-08-20 → 2013-08-19 (-1d) | 2013-08-26 → 2013-08-23 (-3d) |  |  | 58d → 27d |  |  |
| 43 | Historias de usuarios documentadas | 2013-08-26 → 2013-08-23 (-3d) | 2013-08-26 → 2013-08-23 (-3d) |  |  | 58d → 27d |  |  |
| 44 | Análisis comparativo de posibles herramientas tecnológicas a adoptar para el proyecto | 2013-08-27 → 2013-08-26 (-1d) | 2013-08-28 → 2013-08-27 (-1d) |  |  | 58d → 27d |  |  |
| 45 | Cuadro comparativo con las herramientas tecnológicas disponibles | 2013-08-28 → 2013-08-27 (-1d) | 2013-08-28 → 2013-08-27 (-1d) |  |  | 58d → 27d |  |  |
| 46 | Elaboración de diagrama de clases | 2013-08-29 → 2013-08-28 (-1d) | 2013-09-04 → 2013-09-03 (-1d) |  |  | 58d → 27d |  |  |
| 47 | Diagrama de clases elaborado | 2013-09-05 → 2013-09-04 (-1d) | 2013-09-05 → 2013-09-04 (-1d) |  |  | 58d → 27d |  |  |
| 48 | **Fase de Diseño** | 2013-09-06 → 2013-09-05 (-1d) | 2013-10-02 → 2013-10-01 (-1d) |  |  | 58d → 27d |  |  |
| 49 | Elaboración de modelo de base de datos | 2013-09-06 → 2013-09-05 (-1d) | 2013-09-12 → 2013-09-11 (-1d) |  |  | 58d → 27d |  |  |
| 50 | Modelo de base de datos elaborado | 2013-09-13 → 2013-09-12 (-1d) | 2013-09-13 → 2013-09-12 (-1d) |  |  | 58d → 27d |  |  |
| 51 | Elaboración de pseudocódigo en lenguaje natural y español del algoritmo Tabú para la asignación del mejor proveedor al cliente | 2013-09-16 → 2013-09-13 (-3d) | 2013-09-19 → 2013-09-18 (-1d) |  |  | 58d → 27d |  |  |
| 52 | Documento con el pseudocódigo del algoritmo Tabú | 2013-09-19 → 2013-09-18 (-1d) | 2013-09-19 → 2013-09-18 (-1d) |  |  | 58d → 27d |  | was named Documento con el pseudocódigo del algoritmo tabú |
| 53 | Elaboración de principales prototipos de interfaz gráfica del sistema | 2013-09-20 → 2013-09-19 (-1d) | 2013-09-26 → 2013-09-25 (-1d) |  |  | 58d → 27d |  |  |
| 54 | Prototipos de interfaz gráfica elaborados | 2013-09-27 → 2013-09-26 (-1d) | 2013-09-27 → 2013-09-26 (-1d) |  |  | 58d → 27d |  |  |
| 55 | Definición de la arquitectura del sistema | 2013-09-30 → 2013-09-27 (-3d) | 2013-10-02 → 2013-10-01 (-1d) |  |  | 58d → 27d |  |  |
| 56 | Arquitectura del sistema definido | 2013-10-02 → 2013-10-01 (-1d) | 2013-10-02 → 2013-10-01 (-1d) |  |  | 58d → 27d |  |  |
| 57 | **Fase de Implementación** | 2013-12-23 → 2013-10-02 (-82d) | 2014-02-19 → 2013-11-28 (-83d) | 42d? → 42d |  | 0d → 27d |  |  |
| 58 | Iteración 1 - Implementación y Pruebas | 2013-12-24 → 2013-10-02 (-83d) | 2014-01-01 → 2013-10-10 (-83d) |  |  | 0d → 27d | Fase de Implementación → 56 |  |
| 60 | Iteración 2 - Implementación y Pruebas | 2014-01-02 → 2013-10-11 (-83d) | 2014-01-10 → 2013-10-21 (-81d) |  |  | 0d → 27d | 58 → 59 | constraint none → start no earlier than 2013-10-11 |
| 62 | Iteración 3 - Implementación y Pruebas | 2014-01-13 → 2013-10-22 (-83d) | 2014-01-21 → 2013-10-30 (-83d) |  |  | 0d → 27d | 60 → 61 |  |
| 64 | Iteración 4 - Implementación y Pruebas | 2014-01-22 → 2013-10-31 (-83d) | 2014-01-30 → 2013-11-08 (-83d) |  |  | 0d → 27d | 62 → 63 |  |
| 66 | Iteración 5 - Implementación y Pruebas | 2014-01-31 → 2013-11-11 (-81d) | 2014-02-10 → 2013-11-19 (-83d) |  |  | 0d → 27d | 64 → 65 |  |
| 68 | Iteración 6 - Implementación y Pruebas | 2014-02-11 → 2013-11-20 (-83d) | 2014-02-19 → 2013-11-28 (-83d) |  |  | 0d → 27d | 66 → 67 |  |
| 70 | **4. Control** | 2013-03-18 → 2013-04-08 (+21d) | 2013-12-14 → 2013-12-09 (-5d) | 197d → 177d? |  | 48d → 20d |  |  |
| 71 | **Reuniones semanales con el asesor para la primera parte del proyecto de fin de carrera (tesis 1)** | 2013-03-18 → 2013-04-08 (+21d) |  | 68d → 52d |  | 177d → 145d |  | constraint finish no earlier than 2013-06-17 → none |
| 95 | **Reuniones semanales con el asesor para la segunda parte del proyecto de fin de carrera (tesis 2)** | 2013-08-19 → 2013-08-26 (+7d) | 2013-12-14 → 2013-12-09 (-5d) | 85d → 76d |  | 48d → 20d |  | constraint finish no earlier than 2013-12-14 → none |
| 129 | **Reuniones quincenales con los usuarios lideres del sistema** | 2013-07-15 → 2013-07-05 (-10d) | 2013-12-14 → 2013-12-06 (-8d) | 110d → 111d? |  | 48d → 0d |  | constraint finish no earlier than 2013-12-14 → none |
| 157 | **5. Cierre** |  |  | 21d? → 21d |  |  |  |  |
| 159 | Informe final del proyecto de fin de carrera |  |  |  |  | 48d → 15d | none → 158 |  |
| 160 | Sustentación final del proyecto ante jurado |  |  | 1d? → 1d |  | 32d → 0d |  |  |

## Version 3 (saved 2013-08-04, file TESIS_GANTT_V2.mpp)

Last finish stays 2014-01-06. Complete tasks 15 → 19.

Added:

| ID | Task | Duration | Start | Finish | Predecessors | Constraint |
| --- | --- | --- | --- | --- | --- | --- |
| 24 | Desarrollo del Acta de Constitución del Proyecto | 1d | 2013-07-15 | 2013-07-15 | 23 | start no earlier than 2013-07-15 |
| 25 | Acta de Constitución del Proyecto | 0d | 2013-07-15 | 2013-07-15 | 24 |  |

Removed: 27 Desarrollar el Acta de constitución del proyecto; 28 Acta de constitución del proyecto; 131 Reunión con usuarios del sistema; 132 Reunión con usuarios del sistema

Changed:

| ID | Task | Start | Finish | Duration | Complete | Total float | Predecessors | Other |
| --- | --- | --- | --- | --- | --- | --- | --- | --- |
| 1 | **PROYECTO DE FIN DE CARRERA** |  |  | 213d? → 213d | 33% → 36% |  |  |  |
| 2 | **1. Inicio** |  | 2013-06-24 A |  | 99% → 100% | 140d → none |  |  |
| 5 | Revisión de la literatura para elaborar el marco conceptual y el estado del arte |  |  |  |  |  | none → 4 |  |
| 6 | Elaboración de la problemática, marco teórico y estado del arte |  |  |  |  |  | none → 4 |  |
| 7 | Entregable 2 |  |  |  |  |  | 6 → 6, 5 |  |
| 8 | Definición del objetivo general, objetivos específicos y resultados esperados |  |  |  |  |  | none → 7 |  |
| 10 | Definición del alcance y limitaciones del proyecto, y los métodos y procedimientos a usar |  |  |  |  |  | none → 9 |  |
| 12 | Definición de la justificación y viabilidad del proyecto, y correcciones de entregables anteriores |  |  |  |  |  | none → 11 |  |
| 14 | Primera sustentación del proyecto ante jurado | 2013-06-24 A | 2013-06-24 A |  | 0% → 100% | 140d → none | none → 13 |  |
| 15 | **2. Planificacion** |  | 2013-07-16 → 2013-07-24 (+8d) | 37d → 43d | 46% → 58% | 124d → 118d |  |  |
| 17 | Metodología PMBOK escogida | 2013-06-10 A → 2013-05-29 A (-12d) | 2013-06-10 A → 2013-05-29 A (-12d) |  |  |  |  |  |
| 19 | Metodología XP escogida | 2013-06-10 A → 2013-05-29 A (-12d) | 2013-06-10 A → 2013-05-29 A (-12d) |  |  |  |  |  |
| 20 | Elaboración de cronograma del proyecto | 2013-06-13 A | 2013-06-17 A |  | 0% → 100% | 145d → none |  |  |
| 21 | Diagrama de Gantt | 2013-06-17 A | 2013-06-17 A |  | 0% → 100% | 145d → none |  |  |
| 22 | Elaboración de la estructura de desglose de trabajo (EDT) | 2013-07-11 A | 2013-07-13 A |  | 0% → 100% | 126d → none | none → 21 |  |
| 26 | Desarrollo del Plan de Gestión del Proyecto | 2013-07-15 → 2013-07-16 (+1d) | 2013-07-16 → 2013-07-17 (+1d) |  |  | 27d → 26d | none → 25 | constraint finish no earlier than 2013-07-16 → start no earlier than 2013-07-16 |
| 27 | Plan de Gestión del Proyecto | 2013-07-16 → 2013-07-17 (+1d) | 2013-07-16 → 2013-07-17 (+1d) |  |  | 27d → 26d |  |  |
| 28 | Elaboración de plan de gestión de riesgos | 2013-09-02 → 2013-07-18 (-46d) | 2013-09-03 → 2013-07-19 (-46d) |  |  | 86d → 118d | none → 27 | constraint start no earlier than 2013-09-02 → start no earlier than 2013-07-18 |
| 29 | Plan de Gestión de Riesgos | 2013-09-03 → 2013-07-19 (-46d) | 2013-09-03 → 2013-07-19 (-46d) |  |  | 86d → 118d |  | constraint start no earlier than 2013-07-26 → finish no earlier than 2013-07-10 |
| 30 | Elaboración de la matriz de riesgos | 2013-09-04 → 2013-07-22 (-44d) | 2013-09-06 → 2013-07-24 (-44d) |  |  | 86d → 118d |  |  |
| 31 | Matriz de riesgos | 2013-09-06 → 2013-07-24 (-44d) | 2013-09-06 → 2013-07-24 (-44d) |  |  | 86d → 118d |  | constraint start no earlier than 2013-07-31 → finish no earlier than 2013-07-10 |
| 32 | **3. Ejecucion** | 2013-07-17 → 2013-07-23 (+6d) | 2013-11-28 → 2013-12-04 (+6d) |  |  | 27d → 23d |  |  |
| 33 | **Fase de Análisis** | 2013-07-17 → 2013-07-23 (+6d) | 2013-09-06 → 2013-09-10 (+4d) | 38d → 36d |  | 27d → 23d |  |  |
| 34 | Elaboración del caso de negocio | 2013-07-17 → 2013-07-23 (+6d) | 2013-07-23 → 2013-07-29 (+6d) |  |  | 27d → 23d | 27 → none | constraint start no earlier than 2013-07-17 → start no earlier than 2013-07-23 |
| 35 | Documento con el caso de negocio | 2013-07-23 → 2013-07-29 (+6d) | 2013-07-23 → 2013-07-29 (+6d) |  |  | 27d → 23d |  |  |
| 36 | Modelamiento de los procesos de negocio | 2013-07-24 → 2013-07-30 (+6d) | 2013-08-05 → 2013-08-09 (+4d) |  |  | 27d → 23d |  |  |
| 37 | Diagramas de procesos de negocio | 2013-08-05 → 2013-08-09 (+4d) | 2013-08-05 → 2013-08-09 (+4d) |  |  | 27d → 23d |  |  |
| 38 | Definición de las reglas y políticas de negocio | 2013-08-06 → 2013-08-12 (+6d) | 2013-08-12 → 2013-08-16 (+4d) |  |  | 27d → 23d |  |  |
| 39 | Documento con las reglas y políticas del negocio | 2013-08-12 → 2013-08-16 (+4d) | 2013-08-12 → 2013-08-16 (+4d) |  |  | 27d → 23d |  |  |
| 40 | Elaboración de requerimientos del sistema | 2013-08-13 → 2013-08-19 (+6d) | 2013-08-16 → 2013-08-22 (+6d) |  |  | 27d → 23d |  |  |
| 41 | Catálogo de requisitos | 2013-08-16 → 2013-08-22 (+6d) | 2013-08-16 → 2013-08-22 (+6d) |  |  | 27d → 23d |  |  |
| 42 | Elaboración de historias de usuarios | 2013-08-19 → 2013-08-23 (+4d) | 2013-08-23 → 2013-08-29 (+6d) |  |  | 27d → 23d |  |  |
| 43 | Historias de usuarios documentadas | 2013-08-23 → 2013-08-29 (+6d) | 2013-08-23 → 2013-08-29 (+6d) |  |  | 27d → 23d |  |  |
| 44 | Análisis comparativo de posibles herramientas tecnológicas a adoptar para el proyecto | 2013-08-26 → 2013-08-30 (+4d) | 2013-08-27 → 2013-09-02 (+6d) |  |  | 27d → 23d |  |  |
| 45 | Cuadro comparativo con las herramientas tecnológicas disponibles | 2013-08-27 → 2013-09-02 (+6d) | 2013-08-27 → 2013-09-02 (+6d) |  |  | 27d → 23d |  |  |
| 46 | Elaboración de diagrama de clases | 2013-08-28 → 2013-09-03 (+6d) | 2013-09-03 → 2013-09-09 (+6d) |  |  | 27d → 23d |  |  |
| 47 | Diagrama de clases elaborado | 2013-09-04 → 2013-09-10 (+6d) | 2013-09-04 → 2013-09-10 (+6d) |  |  | 27d → 23d |  |  |
| 48 | **Fase de Diseño** | 2013-09-05 → 2013-09-11 (+6d) | 2013-10-01 → 2013-10-07 (+6d) |  |  | 27d → 23d |  |  |
| 49 | Elaboración de modelo de base de datos | 2013-09-05 → 2013-09-11 (+6d) | 2013-09-11 → 2013-09-17 (+6d) |  |  | 27d → 23d |  |  |
| 50 | Modelo de base de datos elaborado | 2013-09-12 → 2013-09-18 (+6d) | 2013-09-12 → 2013-09-18 (+6d) |  |  | 27d → 23d |  |  |
| 51 | Elaboración de pseudocódigo en lenguaje natural y español del algoritmo Tabú para la asignación del mejor proveedor al cliente | 2013-09-13 → 2013-09-19 (+6d) | 2013-09-18 → 2013-09-24 (+6d) |  |  | 27d → 23d |  |  |
| 52 | Documento con el pseudocódigo del algoritmo Tabú | 2013-09-18 → 2013-09-24 (+6d) | 2013-09-18 → 2013-09-24 (+6d) |  |  | 27d → 23d |  |  |
| 53 | Elaboración de principales prototipos de interfaz gráfica del sistema | 2013-09-19 → 2013-09-25 (+6d) | 2013-09-25 → 2013-10-01 (+6d) |  |  | 27d → 23d |  |  |
| 54 | Prototipos de interfaz gráfica elaborados | 2013-09-26 → 2013-10-02 (+6d) | 2013-09-26 → 2013-10-02 (+6d) |  |  | 27d → 23d |  |  |
| 55 | Definición de la arquitectura del sistema | 2013-09-27 → 2013-10-03 (+6d) | 2013-10-01 → 2013-10-07 (+6d) |  |  | 27d → 23d |  |  |
| 56 | Arquitectura del sistema definido | 2013-10-01 → 2013-10-07 (+6d) | 2013-10-01 → 2013-10-07 (+6d) |  |  | 27d → 23d |  |  |
| 57 | **Fase de Implementación** | 2013-10-02 → 2013-10-08 (+6d) | 2013-11-28 → 2013-12-04 (+6d) |  |  | 27d → 23d |  |  |
| 58 | Iteración 1 - Implementación y Pruebas | 2013-10-02 → 2013-10-08 (+6d) | 2013-10-10 → 2013-10-16 (+6d) |  |  | 27d → 23d |  |  |
| 59 | Iteración 1 completada | 2013-10-10 → 2013-10-16 (+6d) | 2013-10-10 → 2013-10-16 (+6d) |  |  | 27d → 23d |  |  |
| 60 | Iteración 2 - Implementación y Pruebas | 2013-10-11 → 2013-10-17 (+6d) | 2013-10-21 → 2013-10-25 (+4d) |  |  | 27d → 23d |  |  |
| 61 | Iteración 2 completada | 2013-10-21 → 2013-10-25 (+4d) | 2013-10-21 → 2013-10-25 (+4d) |  |  | 27d → 23d |  |  |
| 62 | Iteración 3 - Implementación y Pruebas | 2013-10-22 → 2013-10-28 (+6d) | 2013-10-30 → 2013-11-05 (+6d) |  |  | 27d → 23d |  |  |
| 63 | Iteración 3 completada | 2013-10-30 → 2013-11-05 (+6d) | 2013-10-30 → 2013-11-05 (+6d) |  |  | 27d → 23d |  |  |
| 64 | Iteración 4 - Implementación y Pruebas | 2013-10-31 → 2013-11-06 (+6d) | 2013-11-08 → 2013-11-14 (+6d) |  |  | 27d → 23d |  |  |
| 65 | Iteración 4 completada | 2013-11-08 → 2013-11-14 (+6d) | 2013-11-08 → 2013-11-14 (+6d) |  |  | 27d → 23d |  |  |
| 66 | Iteración 5 - Implementación y Pruebas | 2013-11-11 → 2013-11-15 (+4d) | 2013-11-19 → 2013-11-25 (+6d) |  |  | 27d → 23d |  |  |
| 67 | Iteración 5 completada | 2013-11-19 → 2013-11-25 (+6d) | 2013-11-19 → 2013-11-25 (+6d) |  |  | 27d → 23d |  |  |
| 68 | Iteración 6 - Implementación y Pruebas | 2013-11-20 → 2013-11-26 (+6d) | 2013-11-28 → 2013-12-04 (+6d) |  |  | 27d → 23d |  |  |
| 69 | Iteración 6 completada | 2013-11-28 → 2013-12-04 (+6d) | 2013-11-28 → 2013-12-04 (+6d) |  |  | 27d → 23d |  |  |
| 70 | **4. Control** |  |  | 177d? → 177d |  |  |  |  |
| 75 | Reunión con el asesor 2 |  |  |  |  | 191d → 182d | none → 74 |  |
| 77 | Reunión con el asesor 3 |  |  |  |  |  | none → 76 |  |
| 79 | Reunión con el asesor 4 |  |  |  |  |  | none → 78 |  |
| 81 | Reunión con el asesor 5 |  |  |  |  |  | none → 80 |  |
| 83 | Reunión con el asesor 6 |  |  |  |  |  | none → 82 |  |
| 85 | Reunión con el asesor 7 |  |  |  |  |  | none → 84 |  |
| 87 | Reunión con el asesor 8 |  |  |  |  | 160d → 157d | none → 86 |  |
| 89 | Reunión con el asesor 9 |  |  |  |  | 155d → 153d | none → 88 |  |
| 91 | Reunión con el asesor 10 |  |  |  |  | 150d → 149d | none → 90 |  |
| 93 | Reunión con el asesor 11 |  |  |  |  |  | none → 92 |  |

| ID | Task | Duration | Total float | Predecessors |
| --- | --- | --- | --- | --- |
| 99 | Reunión con el asesor 2 |  |  | none → 98 |
| 101 | Reunión con el asesor 3 |  |  | none → 100 |
| 103 | Reunión con el asesor 4 |  |  | none → 102 |
| 105 | Reunión con el asesor 5 |  |  | none → 104 |
| 107 | Reunión con el asesor 6 |  |  | none → 106 |
| 109 | Reunión con el asesor 7 |  |  | none → 108 |
| 111 | Reunión con el asesor 8 |  |  | none → 110 |
| 113 | Reunión con el asesor 9 |  |  | none → 112 |
| 115 | Reunión con el asesor 10 |  |  | none → 114 |
| 117 | Reunión con el asesor 11 |  |  | none → 116 |
| 119 | Reunión con el asesor 12 |  |  | none → 118 |
| 121 | Reunión con el asesor 13 |  |  | none → 120 |
| 123 | Reunión con el asesor 14 |  |  | none → 122 |
| 125 | Reunión con el asesor 15 |  |  | none → 124 |
| 127 | Reunión con el asesor 16 |  |  | none → 126 |
| 129 | **Reuniones quincenales con los usuarios lideres del sistema** | 111d? → 111d |  |  |
| 130 | **Reunión con usuarios del sistema** | 111d? → 111d | 0d → none |  |
| 133 | Reunión con usuarios del sistema 2 |  | 121d → 100d | none → 132 |
| 135 | Reunión con usuarios del sistema 3 |  | 111d → 90d | none → 134 |
| 137 | Reunión con usuarios del sistema 4 |  | 101d → 80d | none → 136 |
| 139 | Reunión con usuarios del sistema 5 |  | 91d → 70d | none → 138 |
| 141 | Reunión con usuarios del sistema 6 |  | 81d → 60d | none → 140 |
| 143 | Reunión con usuarios del sistema 7 |  | 71d → 50d | none → 142 |
| 145 | Reunión con usuarios del sistema 8 |  | 61d → 40d | none → 144 |
| 147 | Reunión con usuarios del sistema 9 |  | 51d → 30d | none → 146 |
| 149 | Reunión con usuarios del sistema 10 |  | 41d → 20d | none → 148 |
| 151 | Reunión con usuarios del sistema 11 |  | 31d → 10d | none → 150 |
| 153 | Reunión con usuarios del sistema 12 |  | 21d → 0d | none → 152 |
| 158 | Sustentación final del proyecto ante jurado |  |  | none → 157 |
